# 云南省企业就业失业数据采集系统项目计划

Schedule from MS Project, 2021-03-25 to 2021-08-20, status date 2021-04-01, costs in ¥, A marks actual dates.

## Calendars

- Standard: Mon-Fri 08:00-12:00, 13:00-17:00; Sat-Sun off.

## Resources

| Resource | Rate | Cost per use |
| --- | --- | --- |
| 资金 |  |  |
| 人员 | 53 | 53 |

## Schedule

| ID | WBS | Task | Type | Duration | Start | Finish | Predecessors | Complete | Remaining | Total slack | Constraint | Work | Actual work | Cost | Actual cost |
| --- | --- | --- | --- | --- | --- | --- | --- | --- | --- | --- | --- | --- | --- | --- | --- |
| 1 | 1 | **分析需求，设置增量** |  | 5d | 2021-03-25 A | 2021-03-31 A |  | 100% |  |  |  | 41h | 41h | 16,000 | 16,000 |
| 2 | 1.1 | 编写需求说明书 |  | 2d | 2021-03-25 A | 2021-03-26 A |  | 100% |  |  |  | 16h | 16h | 4,000 | 4,000 |
| 3 | 1.2 | 增量可行性论证 |  | 2d | 2021-03-30 A | 2021-03-31 A | 2 | 100% |  |  |  | 9h | 9h | 4,000 | 4,000 |
| 4 | 1.3 | 体系结构设计 |  | 1d | 2021-03-30 A | 2021-03-30 A | 2 | 100% |  |  |  | 8h | 8h | 4,000 | 4,000 |
| 5 | 1.4 | 增量模型建立 |  | 1d | 2021-03-31 A | 2021-03-31 A | 3 | 100% |  |  |  | 8h | 8h | 4,000 | 4,000 |
| 6 | 2 | **增量1：基本视图** |  | 11d | 2021-04-01 A | 2021-04-15 |  | 9% | 10d | 0d |  | 87h | 7h | 20,000 | 4,000 |
| 7 | 2.1 | 建立预览原型 |  | 1d | 2021-04-01 A | 2021-04-01 A | 5 | 100% |  |  |  | 7h | 7h | 4,000 | 4,000 |
| 8 | 2.2 | 代码实现 |  | 4d | 2021-04-02 | 2021-04-07 | 7 |  |  | 0d |  | 24h |  | 4,000 |  |
| 9 | 2.3 | 交付代码并测试 |  | 1d | 2021-04-08 | 2021-04-08 | 8 |  |  | 0d |  | 8h |  | 4,000 |  |
| 10 | 2.4 | 质量评测 |  | 2d | 2021-04-09 | 2021-04-12 | 9 |  |  | 0d |  | 24h |  | 4,000 |  |
| 11 | 2.5 | 修改缓冲期 |  | 2d | 2021-04-13 | 2021-04-14 | 10 |  |  | 0d |  |  |  | 4,000 |  |
| 12 | 2.6 | 增量1完成 | milestone | 1d | 2021-04-15 | 2021-04-15 | 11 |  |  | 0d |  | 24h |  |  |  |
| 13 | 3 | **增量2：基本功能** |  | 20d | 2021-04-16 | 2021-05-13 |  |  |  | 0d |  | 96h |  | 24,000 |  |
| 14 | 3.1 | 建立预览原型 |  | 1d | 2021-04-16 | 2021-04-16 | 12 |  |  | 0d | finish no earlier than 2021-04-01 | 8h |  | 4,000 |  |
| 15 | 3.2 | 代码实现 |  | 9d | 2021-04-19 | 2021-04-29 | 14 |  |  | 0d | finish no earlier than 2021-04-07 | 72h |  | 4,000 |  |
| 16 | 3.3 | 交付代码并测试 |  | 2d | 2021-04-30 | 2021-05-03 | 15 |  |  | 0d | finish no earlier than 2021-04-02 | 16h |  | 4,000 |  |
| 17 | 3.4 | 质量评测 |  | 2d | 2021-05-04 | 2021-05-05 | 16 |  |  | 0d | finish no earlier than 2021-04-09 |  |  | 4,000 |  |
| 18 | 3.5 | 增量集成与测试 |  | 2d | 2021-05-06 | 2021-05-07 | 17 |  |  | 0d |  |  |  | 4,000 |  |
| 19 | 3.6 | 修改缓冲期 |  | 3d | 2021-05-10 | 2021-05-12 | 18 |  |  | 0d | finish no earlier than 2021-04-14 |  |  | 4,000 |  |
| 20 | 3.7 | 增量2完成 | milestone | 1d | 2021-05-13 | 2021-05-13 | 19 |  |  | 0d | finish no earlier than 2021-04-15 |  |  |  |  |
| 21 | 4 | **增量3：高级数据功能** |  | 24d | 2021-05-14 | 2021-06-16 |  |  |  | 0d |  |  |  | 24,000 |  |
| 22 | 4.1 | 建立预览原型 |  | 1d | 2021-05-14 | 2021-05-14 | 20 |  |  | 0d | finish no earlier than 2021-04-16 |  |  | 4,000 |  |
| 23 | 4.2 | 代码实现 |  | 11d | 2021-05-17 | 2021-05-31 | 22 |  |  | 0d | finish no earlier than 2021-04-30 |  |  | 4,000 |  |
| 24 | 4.3 | 交付代码并测试 |  | 3d | 2021-06-01 | 2021-06-03 | 23 |  |  | 0d | finish no earlier than 2021-05-04 |  |  | 4,000 |  |
| 25 | 4.4 | 质量评测 |  | 2d | 2021-06-04 | 2021-06-07 | 24 |  |  | 0d | finish no earlier than 2021-05-06 |  |  | 4,000 |  |
| 26 | 4.5 | 增量集成与测试 |  | 3d | 2021-06-08 | 2021-06-10 | 25 |  |  | 0d |  |  |  | 4,000 |  |
| 27 | 4.6 | 修改缓冲期 |  | 3d | 2021-06-11 | 2021-06-15 | 26, 25 |  |  | 0d | finish no earlier than 2021-05-12 |  |  | 4,000 |  |
| 28 | 4.7 | 增量3完成 | milestone | 1d | 2021-06-16 | 2021-06-16 | 27 |  |  | 0d | finish no earlier than 2021-05-13 |  |  |  |  |

Notes:
- 1: 分析需求，撰写需求说明书，同时将增量设置为基本视图（操作界面），基本功能（包括省和企业对数据的上报，修改和管理等基本功能），高级数据功能（汇总，分析等功能），通知模块（发通知，接受通知）以及系统管理（上报时限，用户管理，角色管理，系统监控等）5个增量，以便应对可能变化的需求。
- 5: 这是里程碑任务。将任务工期设置为 0d 以标记项目中的事件。

| ID | WBS | Task | Type | Duration | Start | Finish | Predecessors | Total slack | Constraint | Cost |
| --- | --- | --- | --- | --- | --- | --- | --- | --- | --- | --- |
| 29 | 5 | **增量4：通知模块** |  | 17d | 2021-06-17 | 2021-07-09 |  | 0d |  | 24,000 |
| 30 | 5.1 | 建立预览原型 |  | 1d | 2021-06-17 | 2021-06-17 | 28 | 0d | finish no earlier than 2021-05-14 | 4,000 |
| 31 | 5.2 | 代码实现 |  | 6d | 2021-06-18 | 2021-06-25 | 30 | 0d | finish no earlier than 2021-06-01 | 4,000 |
| 32 | 5.3 | 交付代码并测试 |  | 2d | 2021-06-28 | 2021-06-29 | 31 | 0d | finish no earlier than 2021-06-04 | 4,000 |
| 33 | 5.4 | 质量评测 |  | 2d | 2021-06-30 | 2021-07-01 | 32 | 0d | finish no earlier than 2021-06-09 | 4,000 |
| 34 | 5.5 | 增量集成与测试 |  | 3d | 2021-07-02 | 2021-07-06 | 33 | 0d |  | 4,000 |
| 35 | 5.6 | 修改缓冲期 |  | 2d | 2021-07-07 | 2021-07-08 | 34, 33 | 0d | finish no earlier than 2021-06-16 | 4,000 |
| 36 | 5.7 | 增量4完成 | milestone | 1d | 2021-07-09 | 2021-07-09 | 35 | 0d |  |  |
| 37 | 6 | **增量5：系统管理** |  | 17d | 2021-07-12 | 2021-08-03 |  | 0d |  | 24,000 |
| 38 | 6.1 | 建立预览原型 |  | 1d | 2021-07-12 | 2021-07-12 | 36 | 0d | finish no earlier than 2021-06-15 | 4,000 |
| 39 | 6.2 | 代码实现 |  | 6d | 2021-07-13 | 2021-07-20 | 38 | 0d | finish no earlier than 2021-06-28 | 4,000 |
| 40 | 6.3 | 交付代码并测试 |  | 2d | 2021-07-21 | 2021-07-22 | 39 | 0d | finish no earlier than 2021-06-30 | 4,000 |
| 41 | 6.4 | 质量评测 |  | 2d | 2021-07-23 | 2021-07-26 | 40 | 0d | finish no earlier than 2021-07-02 | 4,000 |
| 42 | 6.5 | 增量集成与测试 |  | 3d | 2021-07-27 | 2021-07-29 | 41 | 0d |  | 4,000 |
| 43 | 6.6 | 修改缓冲期 |  | 2d | 2021-07-30 | 2021-08-02 | 42, 41 | 0d | finish no earlier than 2021-07-07 | 4,000 |
| 44 | 6.7 | 增量5完成 | milestone | 1d | 2021-08-03 | 2021-08-03 | 43 | 0d | finish no earlier than 2021-07-08 |  |
| 45 | 7 | **最终测试，接口调整，实机测试，适配工作** |  | 13d | 2021-08-04 | 2021-08-20 |  | 0d |  | 28,000 |
| 46 | 7.1 | 实机测试 |  | 4d | 2021-08-04 | 2021-08-09 | 44 | 0d | finish no earlier than 2021-06-28 | 4,000 |
| 47 | 7.2 | 接口调整 |  | 2d | 2021-08-04 | 2021-08-05 | 44 | 2d | finish no earlier than 2021-06-30 | 4,000 |
| 48 | 7.3 | 多设备适配 |  | 2d | 2021-08-04 | 2021-08-05 | 44 | 2d | finish no earlier than 2021-06-15 | 4,000 |
| 49 | 7.4 | 性能测试 |  | 3d | 2021-08-04 | 2021-08-06 | 44 | 1d | finish no earlier than 2021-06-15 | 4,000 |
| 50 | 7.5 | 本地化 |  | 3d | 2021-08-04 | 2021-08-06 | 44 | 1d | finish no earlier than 2021-06-15 | 4,000 |
| 51 | 7.6 | 实际环境工作测试 |  | 7d | 2021-08-10 | 2021-08-18 | 46, 47, 48, 49, 50 | 0d | finish no earlier than 2021-06-15 | 4,000 |
| 52 | 7.7 | 交付产品及相关资料 |  | 2d | 2021-08-19 | 2021-08-20 | 51 | 0d | finish no earlier than 2021-06-15 | 4,000 |
